# Children's Book Schedule

How a schedule from MS Project changed from version to version. A marks actual dates.

## Version 1 (saved 2016-01-24, file TrackTimephasedWork.mpp)

Note of the change: Tai Lieu Hoc

| ID | WBS | Task | Duration | Start | Finish | Predecessors | Complete | Total float | Constraint |
| --- | --- | --- | --- | --- | --- | --- | --- | --- | --- |
| 1 | 1 | **Editorial staff meeting** | 60.12d | 2018-04-16 08:00 A | 2018-07-09 09:00 |  | 54% | 103.88d |  |
| 2 |  | Editorial staff meeting 1 | 1h | 2018-04-16 08:00 A | 2018-04-16 09:00 A |  | 100% |  | start no earlier than 2018-04-16 08:00 |
| 3 |  | Editorial staff meeting 2 | 1h | 2018-04-23 08:00 A | 2018-04-23 09:00 A |  | 100% |  | start no earlier than 2018-04-23 08:00 |
| 4 |  | Editorial staff meeting 3 | 1h | 2018-04-30 08:00 A | 2018-04-30 09:00 A |  | 100% |  | start no earlier than 2018-04-30 08:00 |
| 5 |  | Editorial staff meeting 4 | 1h | 2018-05-07 08:00 A | 2018-05-07 09:00 A |  | 100% |  | start no earlier than 2018-05-07 08:00 |
| 6 |  | Editorial staff meeting 5 | 1h | 2018-05-14 08:00 A | 2018-05-14 09:00 A |  | 100% |  | start no earlier than 2018-05-14 08:00 |
| 7 |  | Editorial staff meeting 6 | 1h | 2018-05-21 08:00 A | 2018-05-21 09:00 A |  | 100% |  | start no earlier than 2018-05-21 08:00 |
| 8 |  | Editorial staff meeting 7 | 1h | 2018-05-28 08:00 A | 2018-05-28 09:00 A |  | 100% |  | start no earlier than 2018-05-28 08:00 |
| 9 |  | Editorial staff meeting 8 | 1h | 2018-06-04 08:00 | 2018-06-04 09:00 |  |  | 128.88d | start no earlier than 2018-06-04 08:00 |
| 10 |  | Editorial staff meeting 9 | 1h | 2018-06-11 08:00 | 2018-06-11 09:00 |  |  | 123.88d | start no earlier than 2018-06-11 08:00 |
| 11 |  | Editorial staff meeting 10 | 1h | 2018-06-18 08:00 | 2018-06-18 09:00 |  |  | 118.88d | start no earlier than 2018-06-18 08:00 |
| 12 |  | Editorial staff meeting 11 | 1h | 2018-06-25 08:00 | 2018-06-25 09:00 |  |  | 113.88d | start no earlier than 2018-06-25 08:00 |
| 13 |  | Editorial staff meeting 12 | 1h | 2018-07-02 08:00 | 2018-07-02 09:00 |  |  | 108.88d | start no earlier than 2018-07-02 08:00 |
| 14 |  | Editorial staff meeting 13 | 1h | 2018-07-09 08:00 | 2018-07-09 09:00 |  |  | 103.88d | start no earlier than 2018-07-09 08:00 |
| 15 | 2 | **Acquisition** | 37d | 2018-04-09 08:00 A | 2018-05-29 17:00 |  | 99% | 2d |  |
| 16 |  | Manuscript received | 0d | 2018-04-09 08:00 | 2018-04-09 08:00 |  |  | 39d |  |
| 17 |  | Content edit | 15d | 2018-04-09 08:00 A | 2018-05-03 10:00 A | 16 | 100% |  |  |
| 18 |  | Original art review | 10.25d | 2018-04-26 10:00 A | 2018-05-10 12:00 A | 17FS-5d | 100% |  |  |
| 19 |  | Author review of content edit | 13.5d | 2018-05-10 13:00 A | 2018-05-29 17:00 A | 17, 18 | 100% |  |  |
| 20 |  | Handoff to Editorial | 0d | 2018-05-29 17:00 | 2018-05-29 17:00 | 19 |  | 2d |  |
| 21 | 3 | **Editorial** | 29.25d | 2018-05-30 08:00 | 2018-07-10 10:00 | 15 |  | 2d |  |
| 22 |  | Organize manuscript for copyedit | 5d | 2018-05-30 08:00 | 2018-06-05 17:00 |  |  | 2d |  |
| 23 |  | Copyedit | 11.5d | 2018-06-06 08:00 | 2018-06-21 12:00 | 22 |  | 2d |  |
| 24 |  | Author review of copyedit | 10d | 2018-06-21 13:00 | 2018-07-05 12:00 | 23 |  | 2d |  |
| 25 |  | Copyedit incorp | 5.12d | 2018-07-03 08:00 | 2018-07-10 10:00 | 24FS-2.5% |  | 2d |  |
| 26 |  | Handoff to Production | 0d | 2018-07-10 10:00 | 2018-07-10 10:00 | 25 |  | 2d |  |
| 27 | 4 | **Design and Production** | 58.25d | 2018-07-10 10:00 | 2018-09-28 12:00 | 21 |  | 0.5d |  |
| 28 |  | Set pages | 15d | 2018-07-10 10:00 | 2018-07-31 10:00 |  |  | 2d |  |
| 29 |  | Interior illustration design | 15.25d | 2018-07-10 10:00 | 2018-07-31 12:00 | 28SS |  | 2d |  |
| 30 | 4.3 | **1st Pages review** | 30d | 2018-07-31 13:00 | 2018-09-11 12:00 | 29 |  | 2d |  |
| 31 |  | Proofread and index | 10d | 2018-07-31 13:00 | 2018-08-14 12:00 |  |  | 2d | start no earlier than 2018-07-20 08:00 |
| 32 |  | Incorporate 1st Pages review | 10d | 2018-08-14 13:00 | 2018-08-28 12:00 | 31 |  | 2d |  |
| 33 |  | Send proofed pages to Production | 0d | 2018-08-28 12:00 | 2018-08-28 12:00 | 32 |  | 2d |  |
| 34 |  | Enter page corrections and index | 5d | 2018-08-28 13:00 | 2018-09-04 12:00 | 33 |  | 2d |  |
| 35 |  | Cover design | 5d | 2018-09-04 13:00 | 2018-09-11 12:00 | 34 |  | 2d |  |
| 36 | 4.4 | **2nd Pages review** | 13d | 2018-09-11 13:00 | 2018-09-28 12:00 |  |  | 0.5d |  |
| 37 |  | Proof and review | 6.5d | 2018-09-11 13:00 | 2018-09-19 17:00 | 35 |  | 2d |  |
| 38 |  | Send proofed pages to Production | 0d | 2018-09-19 17:00 | 2018-09-19 17:00 | 37 |  | 2d |  |
| 39 |  | Final review | 5d | 2018-09-21 13:00 | 2018-09-28 12:00 | 38 |  | 0.5d |  |
| 40 | 4.5 | **Design book's companion website** | 10d | 2018-09-11 13:00 | 2018-09-25 12:00 | 30 |  | 3.5d |  |
| 41 |  | Create mockup | 4.5d | 2018-09-11 13:00 | 2018-09-21 12:00 |  |  | 3.5d |  |
| 42 |  | Review with author | 2d | 2018-09-21 13:00 | 2018-09-25 12:00 | 41 |  | 3.5d |  |
| 43 | 5 | **Color prep and printing** | 44d | 2018-10-01 08:00 | 2018-11-29 17:00 | 40 |  | 0d |  |
| 44 |  | Send to color house | 1d | 2018-10-01 08:00 | 2018-10-01 17:00 | 36 |  | 0d |  |
| 45 |  | Generate proofs | 10d | 2018-10-02 08:00 | 2018-10-15 17:00 | 44 |  | 0d |  |
| 46 |  | Print and ship | 30d | 2018-10-19 08:00 | 2018-11-29 17:00 | 45FS+3d |  | 0d |  |
| 47 | 6 | **Book launch prep** | 22d | 2018-10-02 08:00 | 2018-10-31 17:00 |  |  | 21d |  |
| 48 |  | Launch planning | 5d | 2018-10-02 08:00 | 2018-10-08 17:00 | 44 |  | 21d |  |
| 49 |  | Assign launch team members | 1d | 2018-10-09 08:00 | 2018-10-09 17:00 | 48 |  | 21d |  |
| 50 |  | Complete author questionnaire | 5d | 2018-10-10 08:00 | 2018-10-16 17:00 | 49 |  | 21d |  |
| 51 |  | Schedule author interviews | 1d | 2018-10-17 08:00 | 2018-10-17 17:00 | 50 |  | 21d |  |
| 52 |  | Design and order marketing material | 10d | 2018-10-18 08:00 | 2018-10-31 17:00 | 51 |  | 21d |  |

## Version 2 (saved 2016-01-24, file TrackWork.mpp)

Note of the change: Tai Lieu Hoc

Last finish stays 2018-11-29. Complete tasks 10 → 4.

Changed:

| ID | Task | Start | Finish | Duration | Complete | Total float |
| --- | --- | --- | --- | --- | --- | --- |
| 1 | **Editorial staff meeting** |  |  |  | 54% → 15% | 103.88d → 103.75d |
| 4 | Editorial staff meeting 3 | 2018-04-30 08:00 A → 2018-04-30 08:00 | 2018-04-30 09:00 A → 2018-04-30 09:00 |  | 100% → 0% | none → 153.75d |
| 5 | Editorial staff meeting 4 | 2018-05-07 08:00 A → 2018-05-07 08:00 | 2018-05-07 09:00 A → 2018-05-07 09:00 |  | 100% → 0% | none → 148.75d |
| 6 | Editorial staff meeting 5 | 2018-05-14 08:00 A → 2018-05-14 08:00 | 2018-05-14 09:00 A → 2018-05-14 09:00 |  | 100% → 0% | none → 143.75d |
| 7 | Editorial staff meeting 6 | 2018-05-21 08:00 A → 2018-05-21 08:00 | 2018-05-21 09:00 A → 2018-05-21 09:00 |  | 100% → 0% | none → 138.75d |
| 8 | Editorial staff meeting 7 | 2018-05-28 08:00 A → 2018-05-28 08:00 | 2018-05-28 09:00 A → 2018-05-28 09:00 |  | 100% → 0% | none → 133.75d |
| 15 | **Acquisition** |  | 2018-05-29 17:00 → 2018-05-28 12:00 (-1d) | 37d → 35.5d | 99% → 40% | 2d → 0d |
| 16 | Manuscript received | 2018-04-09 08:00 A | 2018-04-09 08:00 A |  | 0% → 100% | 39d → none |
| 18 | Original art review | 2018-04-26 10:00 A → 2018-04-26 10:00 | 2018-05-10 12:00 A → 2018-05-10 12:00 |  | 100% → 0% | none → 0d |
| 19 | Author review of content edit | 2018-05-10 13:00 A → 2018-05-10 13:00 | 2018-05-29 17:00 A → 2018-05-28 12:00 (-1d) | 13.5d → 12d | 100% → 0% | none → 0d |
| 20 | Handoff to Editorial | 2018-05-29 17:00 → 2018-05-28 12:00 (-1d) | 2018-05-29 17:00 → 2018-05-28 12:00 (-1d) |  |  | 2d → 0d |
| 21 | **Editorial** | 2018-05-30 08:00 → 2018-05-28 13:00 (-2d) | 2018-07-10 10:00 → 2018-07-06 14:00 (-4d) | 29.25d → 29.12d |  | 2d → 0d |
| 22 | Organize manuscript for copyedit | 2018-05-30 08:00 → 2018-05-28 13:00 (-2d) | 2018-06-05 17:00 → 2018-06-04 14:00 (-1d) | 5d → 5.12d |  | 2d → 0d |
| 23 | Copyedit | 2018-06-06 08:00 → 2018-06-04 14:00 (-2d) | 2018-06-21 12:00 → 2018-06-19 16:00 (-2d) | 11.5d → 11.25d |  | 2d → 0d |
| 24 | Author review of copyedit | 2018-06-21 13:00 → 2018-06-19 16:00 (-2d) | 2018-07-05 12:00 → 2018-07-03 16:00 (-2d) |  |  | 2d → 0d |
| 25 | Copyedit incorp | 2018-07-03 08:00 → 2018-06-29 11:00 (-4d) | 2018-07-10 10:00 → 2018-07-06 14:00 (-4d) |  |  | 2d → 0d |
| 26 | Handoff to Production | 2018-07-10 10:00 → 2018-07-06 14:00 (-4d) | 2018-07-10 10:00 → 2018-07-06 14:00 (-4d) |  |  | 2d → 0d |
| 27 | **Design and Production** | 2018-07-10 10:00 → 2018-07-06 14:00 (-4d) | 2018-09-28 12:00 → 2018-09-26 16:00 (-2d) |  |  | 0.5d → 0d |
| 28 | Set pages | 2018-07-10 10:00 → 2018-07-06 14:00 (-4d) | 2018-07-31 10:00 → 2018-07-27 14:00 (-4d) |  |  | 2d → 0d |
| 29 | Interior illustration design | 2018-07-10 10:00 → 2018-07-06 14:00 (-4d) | 2018-07-31 12:00 → 2018-07-27 16:00 (-4d) |  |  | 2d → 0d |
| 30 | **1st Pages review** | 2018-07-31 13:00 → 2018-07-27 16:00 (-4d) | 2018-09-11 12:00 → 2018-09-07 16:00 (-4d) |  |  | 2d → 0d |
| 31 | Proofread and index | 2018-07-31 13:00 → 2018-07-27 16:00 (-4d) | 2018-08-14 12:00 → 2018-08-10 16:00 (-4d) |  |  | 2d → 0d |
| 32 | Incorporate 1st Pages review | 2018-08-14 13:00 → 2018-08-10 16:00 (-4d) | 2018-08-28 12:00 → 2018-08-24 16:00 (-4d) |  |  | 2d → 0d |
| 33 | Send proofed pages to Production | 2018-08-28 12:00 → 2018-08-24 16:00 (-4d) | 2018-08-28 12:00 → 2018-08-24 16:00 (-4d) |  |  | 2d → 0d |
| 34 | Enter page corrections and index | 2018-08-28 13:00 → 2018-08-24 16:00 (-4d) | 2018-09-04 12:00 → 2018-08-31 16:00 (-4d) |  |  | 2d → 0d |
| 35 | Cover design | 2018-09-04 13:00 → 2018-08-31 16:00 (-4d) | 2018-09-11 12:00 → 2018-09-07 16:00 (-4d) |  |  | 2d → 0d |
| 36 | **2nd Pages review** | 2018-09-11 13:00 → 2018-09-07 16:00 (-4d) | 2018-09-28 12:00 → 2018-09-26 16:00 (-2d) |  |  | 0.5d → 0d |
| 37 | Proof and review | 2018-09-11 13:00 → 2018-09-07 16:00 (-4d) | 2018-09-19 17:00 → 2018-09-18 11:00 (-1d) |  |  | 2d → 0d |
| 38 | Send proofed pages to Production | 2018-09-19 17:00 → 2018-09-18 11:00 (-1d) | 2018-09-19 17:00 → 2018-09-18 11:00 (-1d) |  |  | 2d → 0d |
| 39 | Final review | 2018-09-21 13:00 → 2018-09-19 16:00 (-2d) | 2018-09-28 12:00 → 2018-09-26 16:00 (-2d) |  |  | 0.5d → 0d |
| 40 | **Design book's companion website** | 2018-09-11 13:00 → 2018-09-07 16:00 (-4d) | 2018-09-25 12:00 → 2018-09-21 16:00 (-4d) |  |  | 3.5d → 3d |
| 41 | Create mockup | 2018-09-11 13:00 → 2018-09-07 16:00 (-4d) | 2018-09-21 12:00 → 2018-09-19 16:00 (-2d) |  |  | 3.5d → 3d |
| 42 | Review with author | 2018-09-21 13:00 → 2018-09-19 16:00 (-2d) | 2018-09-25 12:00 → 2018-09-21 16:00 (-4d) |  |  | 3.5d → 3d |
| 43 | **Color prep and printing** | 2018-10-01 08:00 → 2018-09-26 16:00 (-5d) | 2018-11-29 17:00 → 2018-11-29 16:00 | 44d → 46d |  |  |
| 44 | Send to color house | 2018-10-01 08:00 → 2018-09-26 16:00 (-5d) | 2018-10-01 17:00 → 2018-10-01 16:00 |  |  |  |
| 45 | Generate proofs | 2018-10-02 08:00 → 2018-10-01 16:00 (-1d) | 2018-10-15 17:00 → 2018-10-15 16:00 |  |  |  |
| 46 | Print and ship | 2018-10-19 08:00 → 2018-10-18 16:00 (-1d) | 2018-11-29 17:00 → 2018-11-29 16:00 |  |  |  |
| 47 | **Book launch prep** | 2018-10-02 08:00 → 2018-10-01 16:00 (-1d) | 2018-10-31 17:00 → 2018-10-31 16:00 |  |  |  |
| 48 | Launch planning | 2018-10-02 08:00 → 2018-10-01 16:00 (-1d) | 2018-10-08 17:00 → 2018-10-08 16:00 |  |  |  |
| 49 | Assign launch team members | 2018-10-09 08:00 → 2018-10-08 16:00 (-1d) | 2018-10-09 17:00 → 2018-10-09 16:00 |  |  |  |
| 50 | Complete author questionnaire | 2018-10-10 08:00 → 2018-10-09 16:00 (-1d) | 2018-10-16 17:00 → 2018-10-16 16:00 |  |  |  |
| 51 | Schedule author interviews | 2018-10-17 08:00 → 2018-10-16 16:00 (-1d) | 2018-10-17 17:00 → 2018-10-17 16:00 |  |  |  |
| 52 | Design and order marketing material | 2018-10-18 08:00 → 2018-10-17 16:00 (-1d) | 2018-10-31 17:00 → 2018-10-31 16:00 |  |  |  |
